# Plan

Schedule from MS Project, 2012-02-15 to 2012-03-23.
CSG Systems, Inc

## Calendars

- Standard: Mon-Fri 08:00-12:00, 13:00-17:00; Sat-Sun off.

## Resources

| Resource | Group |
| --- | --- |
| Brandon Lee | Dev |
| Kelly Lein | Dev |
| Stanton Ware | Des |
| 4 |  |

## Schedule

| ID | WBS | Task | Duration | Start | Finish | Predecessors | Total slack | Free slack | Constraint | Resources | Work |
| --- | --- | --- | --- | --- | --- | --- | --- | --- | --- | --- | --- |
| 1 | 1 | **Milestone 1** | 10d? | 2012-02-15 | 2012-02-28 |  | 0d |  |  |  | 114.4h |
| 2 | 1-1 | **1. Subscriber Service** | 9d? | 2012-02-15 | 2012-02-27 |  | 0d |  |  |  | 50.4h |
| 3 | 1.1.1 | API Refactor using reference App | 7d? | 2012-02-15 | 2012-02-23 |  | 0d |  |  | Brandon Lee [70%] | 39.2h |
| 4 | 1.1.2 | Error Handling | 2d? | 2012-02-24 | 2012-02-27 | 3 | 0d |  |  | Brandon Lee [70%] | 11.2h |
| 5 | 1.2 | **2. Download Service** | 10d? | 2012-02-15 | 2012-02-28 |  | 8d |  |  |  | 64h |
| 6 | 1.2.1 | Implement Product Metadata Manangement including store, delete, and retrieve | 4d? | 2012-02-15 | 2012-02-20 |  | 2d | 0d |  | Kelly Lein [80%] | 25.6h |
| 7 | 1.2.2 | **Download Mangement** | 6d? | 2012-02-21 | 2012-02-28 |  | 8d |  |  |  | 38.4h |
| 8 | 1.2.2.1 | Queue Management (Add and Remove) | 2d? | 2012-02-21 | 2012-02-22 | 6 | 8d | 0d |  | Kelly Lein [80%] | 12.8h |
| 9 | 1.2.2.2 | Save | 2d? | 2012-02-23 | 2012-02-24 | 8 | 2d | 0d |  | Kelly Lein [80%] | 12.8h |
| 10 | 1.2.2.3 | Pause / Resume | 2d? | 2012-02-27 | 2012-02-28 | 9 | 8d | 2d |  | Kelly Lein [80%] | 12.8h |
| 11 | 2 | **Milestone 2** | 9d? | 2012-02-28 | 2012-03-09 |  | 0d |  |  |  | 50.4h |
| 12 | 2.1 | **3. Media Service** | 9d? | 2012-02-28 | 2012-03-09 |  | 0d |  |  |  | 50.4h |
| 13 | 2.1.1 | DRM wrapper Implemenation | 4d? | 2012-02-28 | 2012-03-02 | 4 | 0d |  |  | Brandon Lee [70%] | 22.4h |
| 14 | 2.1.2 | Multiple DRM Adapter Implementation | 3d? | 2012-03-05 | 2012-03-07 | 13 | 0d |  |  | Brandon Lee [70%] | 16.8h |
| 15 | 2.1.3 | License Acquisition | 2d? | 2012-03-08 | 2012-03-09 | 14 | 0d |  |  | Brandon Lee [70%] | 11.2h |
| 16 | 3 | **Milestone 3** | 18d? | 2012-02-29 | 2012-03-23 |  | 0d |  |  |  | 164.8h |
| 17 | 3.1 | **4. View - Product Detail View** | 18d? | 2012-02-29 | 2012-03-23 |  | 0d |  |  |  | 83.2h |
| 18 | 3.1.1 | Download | 6d? | 2012-03-02 | 2012-03-09 | 10 | 6d | 0d | start no earlier than 2012-03-02 | Kelly Lein [80%] | 38.4h |
| 19 | 3.1.2 | Access Management | 2d? | 2012-02-29 | 2012-03-01 | 4 | 16d |  | start no earlier than 2012-02-29 | Kelly Lein [80%] | 12.8h |
| 20 | 3.1.3 | Play | 4d? | 2012-03-19 | 2012-03-22 | 15 | 1d |  | start no earlier than 2012-03-19 | Kelly Lein [80%] | 25.6h |
| 21 | 3.1.4 | Archive | 1d? | 2012-03-23 | 2012-03-23 | 18 | 0d |  | start no earlier than 2012-03-23 | Kelly Lein [80%] | 6.4h |
| 22 | 3.2 | 5. View - Library List (Download and Simple) | 4d? | 2012-03-12 | 2012-03-15 | 18 | 6d |  |  | Kelly Lein [80%] | 25.6h |
| 23 | 3.3 | 6. View - Login | 2d? | 2012-03-12 | 2012-03-13 | 15 | 0d |  | start no earlier than 2012-03-12 | Brandon Lee [70%] | 11.2h |
| 24 | 3.4 | 7. View - Device Registration | 3d? | 2012-03-14 | 2012-03-16 | 23 | 0d |  | start no earlier than 2012-03-14 | Brandon Lee [70%] | 16.8h |
| 25 | 3.5 | 8. View - Help | 3d? | 2012-03-19 | 2012-03-21 | 24 | 0d |  | start no earlier than 2012-03-19 | Brandon Lee [70%] | 16.8h |
| 26 | 3.6 | 9. View - Settings | 2d? | 2012-03-22 | 2012-03-23 | 25 | 0d |  | start no earlier than 2012-03-19 | Brandon Lee [70%] | 11.2h |
